# УП_Шистерин_эксперимент

Schedule from MS Project, 2025-02-03 to 2025-08-18, status date 2025-04-01, costs in ₽, A marks actual dates.

## Calendars

- Стандартный: Mon-Fri 09:00-13:00, 14:00-18:00; Sat-Sun off. Exceptions (off unless hours are given): 2025-02-23, 2025-03-09, 2025-04-30 to 2025-05-01, 2025-05-07 to 2025-05-08, 2025-06-11.

## Resources

| Resource | Group | Rate |
| --- | --- | --- |
| Руководитель проекта | Руководство | 2500 |
| Бизнес-аналитик | Аналитика | 1800 |
| Аналитик требований | Аналитика | 1600 |
| Архитектор | Проектирование | 2800 |
| UX/UI-дизайнер | Проектирование | 1900 |
| Мобильный разработчик | Разработка | 3600 |
| Бэкенд-разработчик | Разработка | 2100 |
| DevOps-инженер | Разработка | 2300 |
| Тестировщик | Тестирование | 1700 |
| Специалист по ИБ | Безопасность | 2700 |
| Аналитик данных | Аналитика | 2000 |
| Технический директор | Руководство | 3500 |
| Технический писатель | Документирование | 1400 |
| Маркетолог | Продвижение | 1600 |
| Комплект тестовых устройств | Оборудование | 15000 |
| Лицензии на средства разработки | Оборудование | 85000 |
| Услуги облачной инфраструктуры | Оборудование | 120000 |
| Услуги внешнего аудита ИБ | Оборудование | 250000 |

## Schedule

| ID | WBS | Task | Type | Duration | Start | Finish | Total slack | Constraint |
| --- | --- | --- | --- | --- | --- | --- | --- | --- |
| 1 | 1 | **Совещание** |  | 130d | 2025-02-07 05:00 | 2025-08-15 06:00 | 0d |  |
| 2 | 1.1 | Совещание 1 | manual | 1h | 2025-02-07 05:00 | 2025-02-07 06:00 |  | start no earlier than 2025-02-07 05:00 |
| 3 | 1.2 | Совещание 2 | manual | 1h | 2025-02-14 05:00 | 2025-02-14 06:00 |  | start no earlier than 2025-02-14 05:00 |
| 4 | 1.3 | Совещание 3 | manual | 1h | 2025-02-21 05:00 | 2025-02-21 06:00 |  | start no earlier than 2025-02-21 05:00 |
| 5 | 1.4 | Совещание 4 | manual | 1h | 2025-02-28 05:00 | 2025-02-28 06:00 |  | start no earlier than 2025-02-28 05:00 |
| 6 | 1.5 | Совещание 5 | manual | 1h | 2025-03-07 05:00 | 2025-03-07 06:00 |  | start no earlier than 2025-03-07 05:00 |
| 7 | 1.6 | Совещание 6 | manual | 1h | 2025-03-14 05:00 | 2025-03-14 06:00 |  | start no earlier than 2025-03-14 05:00 |
| 8 | 1.7 | Совещание 7 | manual | 1h | 2025-03-21 05:00 | 2025-03-21 06:00 |  | start no earlier than 2025-03-21 05:00 |
| 9 | 1.8 | Совещание 8 | manual | 1h | 2025-03-28 05:00 | 2025-03-28 06:00 |  | start no earlier than 2025-03-28 05:00 |
| 10 | 1.9 | Совещание 9 | manual | 1h | 2025-04-04 05:00 | 2025-04-04 06:00 |  | start no earlier than 2025-04-04 05:00 |
| 11 | 1.10 | Совещание 10 | manual | 1h | 2025-04-11 05:00 | 2025-04-11 06:00 |  | start no earlier than 2025-04-11 05:00 |
| 12 | 1.11 | Совещание 11 | manual | 1h | 2025-04-18 05:00 | 2025-04-18 06:00 |  | start no earlier than 2025-04-18 05:00 |
| 13 | 1.12 | Совещание 12 | manual | 1h | 2025-04-25 05:00 | 2025-04-25 06:00 |  | start no earlier than 2025-04-25 05:00 |
| 14 | 1.13 | Совещание 13 | manual | 1h | 2025-05-02 05:00 | 2025-05-02 06:00 |  | start no earlier than 2025-05-02 05:00 |
| 15 | 1.14 | Совещание 14 | manual | 1h | 2025-05-09 05:00 | 2025-05-09 06:00 |  | start no earlier than 2025-05-09 05:00 |
| 16 | 1.15 | Совещание 15 | manual | 1h | 2025-05-16 05:00 | 2025-05-16 06:00 |  | start no earlier than 2025-05-16 05:00 |
| 17 | 1.16 | Совещание 16 | manual | 1h | 2025-05-23 05:00 | 2025-05-23 06:00 |  | start no earlier than 2025-05-23 05:00 |
| 18 | 1.17 | Совещание 17 | manual | 1h | 2025-05-30 05:00 | 2025-05-30 06:00 |  | start no earlier than 2025-05-30 05:00 |
| 19 | 1.18 | Совещание 18 | manual | 1h | 2025-06-06 05:00 | 2025-06-06 06:00 |  | start no earlier than 2025-06-06 05:00 |
| 20 | 1.19 | Совещание 19 | manual | 1h | 2025-06-13 05:00 | 2025-06-13 06:00 |  | start no earlier than 2025-06-13 05:00 |
| 21 | 1.20 | Совещание 20 | manual | 1h | 2025-06-20 05:00 | 2025-06-20 06:00 |  | start no earlier than 2025-06-20 05:00 |
| 22 | 1.21 | Совещание 21 | manual | 1h | 2025-06-27 05:00 | 2025-06-27 06:00 |  | start no earlier than 2025-06-27 05:00 |
| 23 | 1.22 | Совещание 22 | manual | 1h | 2025-07-04 05:00 | 2025-07-04 06:00 |  | start no earlier than 2025-07-04 05:00 |
| 24 | 1.23 | Совещание 23 | manual | 1h | 2025-07-11 05:00 | 2025-07-11 06:00 |  | start no earlier than 2025-07-11 05:00 |
| 25 | 1.24 | Совещание 24 | manual | 1h | 2025-07-18 05:00 | 2025-07-18 06:00 |  | start no earlier than 2025-07-18 05:00 |
| 26 | 1.25 | Совещание 25 | manual | 1h | 2025-07-25 05:00 | 2025-07-25 06:00 |  | start no earlier than 2025-07-25 05:00 |
| 27 | 1.26 | Совещание 26 | manual | 1h | 2025-08-01 05:00 | 2025-08-01 06:00 |  | start no earlier than 2025-08-01 05:00 |
| 28 | 1.27 | Совещание 27 | manual | 1h | 2025-08-08 05:00 | 2025-08-08 06:00 |  | start no earlier than 2025-08-08 05:00 |
| 29 | 1.28 | Совещание 28 | manual | 1h | 2025-08-15 05:00 | 2025-08-15 06:00 |  | start no earlier than 2025-08-15 05:00 |

| ID | WBS | Task | Type | Duration | Start | Finish | Predecessors | Complete | Remaining | Baseline start | Baseline finish | Baseline duration | Total slack | Constraint | Resources | Work | Actual work | Cost | Baseline cost | Actual cost | Риск (сводно) |
| --- | --- | --- | --- | --- | --- | --- | --- | --- | --- | --- | --- | --- | --- | --- | --- | --- | --- | --- | --- | --- | --- |
| 30 | 2 | **Этап 1. Инициализация проекта и анализ требований** |  | 14.5d | 2025-02-03 05:00 A | 2025-02-21 14:00 A |  | 100% |  | 2025-02-03 05:00 | 2025-02-21 14:00 | 14.5d |  |  |  | 300h | 300h | 573,000 | 573,000 | 573,000 |  |
| 31 | 2.1 | Утверждение концепции и устав проекта | manual | 3d | 2025-02-03 05:00 A | 2025-02-05 13:00 A |  | 100% |  | 2025-02-03 05:00 | 2025-02-05 13:00 | 3d |  |  | Руководитель проекта [50%] | 12h | 12h | 30,000 | 30,000 | 30,000 |  |
| 32 | 2.2 | Анализ бизнес-процессов интернет-банка | manual | 5d | 2025-02-05 14:00 A | 2025-02-12 13:00 A | 31 | 100% |  | 2025-02-05 14:00 | 2025-02-12 13:00 | 5d |  |  | Бизнес-аналитик | 40h | 40h | 72,000 | 72,000 | 72,000 |  |
| 33 | 2.3 | Сбор и систематизация требований заказчика | manual | 6d | 2025-02-10 14:00 A | 2025-02-18 13:00 A | 31 | 100% |  | 2025-02-10 14:00 | 2025-02-18 13:00 | 6d |  |  | Бизнес-аналитик; Аналитик требований | 96h | 96h | 163,200 | 163,200 | 163,200 |  |
| 34 | 2.4 | Изучение нормативных требований (152-ФЗ, ГОСТ Р 56920) | manual | 4d | 2025-02-12 14:00 A | 2025-02-18 13:00 A | 32 | 100% |  | 2025-02-12 14:00 | 2025-02-18 13:00 | 4d |  |  | Аналитик требований | 32h | 32h | 51,200 | 51,200 | 51,200 | Риск: 40% / 120000 руб. |
| 35 | 2.5 | Анализ конкурентных мобильных банков | manual | 4d | 2025-02-12 14:00 A | 2025-02-18 13:00 A | 32 | 100% |  | 2025-02-12 14:00 | 2025-02-18 13:00 | 4d |  |  | Аналитик требований | 32h | 32h | 51,200 | 51,200 | 51,200 |  |
| 36 | 2.6 | Формирование бэклога и критериев приёмки | manual | 3d | 2025-02-18 14:00 A | 2025-02-21 13:00 A | 33, 34, 35 | 100% |  | 2025-02-18 14:00 | 2025-02-21 13:00 | 3d |  |  | Бизнес-аналитик | 24h | 24h | 43,200 | 43,200 | 43,200 |  |
| 37 | 2.7 | Создание репозитория и настройка CI/CD-конвейера | manual | 3d | 2025-02-05 09:00 A | 2025-02-07 18:00 A | 31SS+2d | 100% |  | 2025-02-05 09:00 | 2025-02-07 18:00 | 3d |  |  | DevOps-инженер | 24h | 24h | 55,200 | 55,200 | 55,200 |  |
| 38 | 2.8 | Развёртывание тестового стенда и средств автоматизации | manual | 5d | 2025-02-10 09:00 A | 2025-02-14 18:00 A | 37 | 100% |  | 2025-02-10 09:00 | 2025-02-14 18:00 | 5d |  |  | DevOps-инженер; Комплект тестовых устройств | 40h | 40h | 107,000 | 107,000 | 107,000 |  |
| 39 | 2.9 | Веха 1. Согласование требований и плана проекта | milestone, manual | 0d | 2025-02-21 14:00 A | 2025-02-21 14:00 A | 36, 38 | 100% |  | 2025-02-21 14:00 | 2025-02-21 14:00 | 0d |  |  | Руководитель проекта [50%] |  |  |  |  |  |  |
| 40 | 3 | **Этап 2. Проектирование мобильного приложения** |  | 21d | 2025-02-21 14:00 A | 2025-03-24 14:00 A |  | 100% |  | 2025-02-21 14:00 | 2025-03-24 14:00 | 21d |  |  |  | 435.2h | 435.2h | 1,071,200 | 1,071,200 | 1,071,200 |  |
| 41 | 3.1 | Разработка целевой архитектуры мобильного приложения | manual | 6d | 2025-02-21 14:00 A | 2025-03-03 13:00 A | 39 | 100% |  | 2025-02-21 14:00 | 2025-03-03 13:00 | 6d |  |  | Архитектор | 48h | 48h | 134,400 | 134,400 | 134,400 |  |
| 42 | 3.2 | Проектирование UX/UI мобильного интерфейса | manual | 8d | 2025-02-21 14:00 A | 2025-03-05 13:00 A | 39 | 100% |  | 2025-02-21 14:00 | 2025-03-05 13:00 | 8d |  |  | UX/UI-дизайнер | 64h | 64h | 121,600 | 121,600 | 121,600 |  |
| 43 | 3.3 | Проектирование интеграционного слоя с API банка | manual | 6d | 2025-03-03 14:00 A | 2025-03-11 13:00 A | 41 | 100% |  | 2025-03-03 14:00 | 2025-03-11 13:00 | 6d |  |  | Архитектор | 48h | 48h | 134,400 | 134,400 | 134,400 |  |
| 44 | 3.4 | Проектирование схемы БД офлайн-кэша | manual | 5d | 2025-03-04 14:00 A | 2025-03-11 13:00 A | 41 | 100% |  | 2025-03-04 14:00 | 2025-03-11 13:00 | 5d |  |  | Архитектор; Бэкенд-разработчик [50%] | 60h | 60h | 154,000 | 154,000 | 154,000 |  |
| 45 | 3.5 | Проектирование модели безопасности и аутентификации | manual | 5d | 2025-03-03 14:00 A | 2025-03-10 13:00 A | 41 | 100% |  | 2025-03-03 14:00 | 2025-03-10 13:00 | 5d |  |  | Специалист по ИБ | 40h | 40h | 108,000 | 108,000 | 108,000 |  |
| 46 | 3.6 | Разработка технического задания и API-контрактов | manual | 6d | 2025-03-11 14:00 A | 2025-03-19 13:00 A | 42, 43, 44, 45 | 100% |  | 2025-03-11 14:00 | 2025-03-19 13:00 | 6d |  |  | Архитектор | 48h | 48h | 134,400 | 134,400 | 134,400 | Риск: 35% / 95000 руб. |
| 47 | 3.7 | Разработка дизайн-макетов ключевых экранов | manual | 6d | 2025-03-05 14:00 A | 2025-03-13 13:00 A | 42 | 100% |  | 2025-03-05 14:00 | 2025-03-13 13:00 | 6d |  |  | UX/UI-дизайнер | 48h | 48h | 91,200 | 91,200 | 91,200 |  |
| 48 | 3.8 | Согласование дизайн-макетов с заказчиком | manual | 4d | 2025-03-13 14:00 A | 2025-03-19 13:00 A | 47 | 100% |  | 2025-03-13 14:00 | 2025-03-19 13:00 | 4d |  |  | UX/UI-дизайнер; Руководитель проекта [50%] | 48h | 48h | 100,800 | 100,800 | 100,800 |  |
| 49 | 3.9 | Рецензирование архитектурных решений | manual | 3d | 2025-03-19 14:00 A | 2025-03-24 13:00 A | 46 | 100% |  | 2025-03-19 14:00 | 2025-03-24 13:00 | 3d |  |  | Архитектор; Технический директор [30%] | 31.2h | 31.2h | 92,400 | 92,400 | 92,400 |  |
| 50 | 3.10 | Веха 2. Архитектура мобильного приложения согласована | milestone, manual | 0d | 2025-03-24 14:00 A | 2025-03-24 14:00 A | 48, 49 | 100% |  | 2025-03-24 14:00 | 2025-03-24 14:00 | 0d |  |  | Руководитель проекта [50%] |  |  |  |  |  |  |
| 51 | 4 | **Этап 3. Разработка функционального ядра** |  | 36d | 2025-03-24 14:00 A | 2025-05-19 13:00 |  | 5% | 34.06d | 2025-03-24 14:00 | 2025-05-13 13:00 | 32d | 0d |  |  | 980h | 148.48h | 2,848,800 | 2,081,600 | 406,720 |  |
| 52 | 4.1 | Разработка каркаса приложения и навигации | manual | 28.1d | 2025-03-24 14:00 A | 2025-05-05 14:48 | 50 | 23% | 21.7d | 2025-03-24 14:00 | 2025-04-03 13:00 | 8d |  |  | Мобильный разработчик [200%] | 128h | 102.4h | 337,600 | 281,600 | 245,440 | Риск: 30% / 150000 руб. |
| 53 | 4.2 | Реализация экрана аутентификации (PIN, биометрия) | manual | 23.22d | 2025-04-03 14:00 A | 2025-05-12 15:45 | 52 | 6% | 21.94d | 2025-04-03 14:00 | 2025-04-11 13:00 | 6d |  |  | Мобильный разработчик; Специалист по ИБ [50%] | 72h | 15.36h | 237,600 | 170,400 | 50,688 |  |
| 54 | 4.3 | Реализация главного экрана и списка операций | manual | 23.22d | 2025-04-03 14:00 A | 2025-05-12 15:45 | 52 | 6% | 21.94d | 2025-04-03 14:00 | 2025-04-11 13:00 | 6d |  |  | Мобильный разработчик | 48h | 10.24h | 172,800 | 105,600 | 36,864 |  |
| 55 | 4.4 | Реализация экрана платежей и переводов | manual | 22d | 2025-04-11 14:00 | 2025-05-19 13:00 | 53, 54 |  |  | 2025-04-11 14:00 | 2025-04-25 13:00 | 10d |  | must start on 2025-04-11 14:00 | Мобильный разработчик [200%] | 160h |  | 576,000 | 352,000 |  |  |
| 56 | 4.5 | Реализация чатов с поддержкой банка | manual | 18d | 2025-04-11 14:00 | 2025-05-13 13:00 | 54 |  |  | 2025-04-11 14:00 | 2025-04-21 13:00 | 6d |  |  | Мобильный разработчик; Бэкенд-разработчик [50%] | 72h |  | 223,200 | 156,000 |  |  |
| 57 | 4.6 | Реализация витрины продуктов и вкладов | manual | 17d | 2025-04-11 14:00 | 2025-05-12 13:00 | 54 |  |  | 2025-04-11 14:00 | 2025-04-18 13:00 | 5d |  |  | Мобильный разработчик | 40h |  | 144,000 | 88,000 |  |  |
| 58 | 4.7 | Разработка офлайн-режима и механизма синхронизации | manual | 10d | 2025-04-25 14:00 | 2025-05-15 13:00 | 55 |  |  | 2025-04-25 14:00 | 2025-05-13 13:00 | 8d |  |  | Мобильный разработчик; Бэкенд-разработчик | 128h |  | 364,800 | 275,200 |  | Риск: 45% / 180000 руб. |
| 59 | 4.8 | Интеграция с push-уведомлениями | manual | 21.22d | 2025-04-03 14:00 A | 2025-05-06 15:45 | 52 | 6% | 19.94d | 2025-04-03 14:00 | 2025-04-09 13:00 | 4d |  |  | Мобильный разработчик | 32h | 10.24h | 115,200 | 70,400 | 36,864 |  |
| 60 | 4.9 | Реализация модуля аналитики и персонализации | manual | 6d | 2025-04-11 14:00 | 2025-04-21 13:00 | 54 |  |  | 2025-04-11 14:00 | 2025-04-21 13:00 | 6d |  |  | Аналитик данных | 48h |  | 96,000 | 96,000 |  |  |
| 61 | 4.10 | Реализация офлайн-кэша на стороне клиента | manual | 23.22d | 2025-04-03 14:00 A | 2025-05-12 15:45 | 44, 52 | 6% | 21.94d | 2025-04-03 14:00 | 2025-04-11 13:00 | 6d |  |  | Мобильный разработчик | 48h | 10.24h | 172,800 | 105,600 | 36,864 |  |
| 62 | 4.11 | Реализация аналитических дашбордов | manual | 11d | 2025-04-21 14:00 | 2025-05-12 13:00 | 60SF+2d |  |  | 2025-04-21 14:00 | 2025-04-28 13:00 | 5d |  |  | Аналитик данных; Мобильный разработчик [50%] | 60h |  | 152,000 | 124,000 |  |  |
| 63 | 4.12 | Написание unit-тестов (целевое покрытие 80%) | manual | 6.25d | 2025-04-25 14:00 | 2025-05-09 16:00 | 53, 55, 56, 57, 61 |  |  | 2025-04-25 14:00 | 2025-05-12 13:00 | 7d |  | start no earlier than 2025-04-25 14:00 | Тестировщик [150%] | 84h |  | 142,800 | 142,800 |  |  |
| 64 | 4.13 | Нагрузочное тестирование API банка | manual | 5d | 2025-04-30 14:00 | 2025-05-12 13:00 | 63FF+1d |  |  | 2025-04-30 14:00 | 2025-05-12 13:00 | 5d |  |  | Тестировщик; DevOps-инженер [50%] | 60h |  | 114,000 | 114,000 |  |  |
| 65 | 4.14 | Веха 3. Функциональное ядро разработано | milestone, manual | 0d | 2025-05-07 14:00 | 2025-05-07 14:00 | 59, 62, 63, 64 |  |  | 2025-05-07 14:00 | 2025-05-07 14:00 | 0d |  |  | Руководитель проекта [50%] |  |  |  |  |  |  |

Notes:
- 34: Риск: изменение требований 152-ФЗ в ходе проекта. Вероятность 40%, ожидаемые потери 120 000 руб. Меры: предварительное согласование регламентов со службой ИБ, буфер 2 дня.
- 46: Риск: несогласованность API-контрактов с банковской интеграцией. Вероятность 35%, потери 95 000 руб. Меры: еженедельный синхронизационный семинар с интеграторами.
- 52: Риск: дефицит мобильных разработчиков в команде. Вероятность 30%, потери 150 000 руб. Меры: буфер 3 дня, резерв из команды backend-разработки.
- 58: Риск: нестабильная работа офлайн-режима при потере связи. Вероятность 45%, потери 180 000 руб. Меры: тестирование на реальных устройствах, буфер 4 дня.

| ID | WBS | Task | Type | Duration | Start | Finish | Predecessors | Baseline start | Baseline finish | Baseline duration | Total slack | Constraint | Resources | Work | Cost | Baseline cost | Риск (сводно) |
| --- | --- | --- | --- | --- | --- | --- | --- | --- | --- | --- | --- | --- | --- | --- | --- | --- | --- |
| 66 | 5 | **Этап 4. Интеграция с банковскими сервисами** |  | 26.5d | 2025-05-07 14:00 | 2025-06-17 13:00 |  | 2025-05-07 14:00 | 2025-06-17 13:00 | 26.5d | 0d |  |  | 468h | 1,300,000 | 1,244,000 |  |
| 67 | 5.1 | Разработка клиента REST API интернет-банка | manual | 8d | 2025-05-07 14:00 | 2025-05-20 13:00 | 65 | 2025-05-07 14:00 | 2025-05-20 13:00 | 8d |  |  | Бэкенд-разработчик [150%] | 96h | 201,600 | 201,600 |  |
| 68 | 5.2 | Интеграция с платёжным шлюзом | manual | 7d | 2025-05-19 14:00 | 2025-05-28 13:00 | 67 | 2025-05-19 14:00 | 2025-05-28 13:00 | 7d |  |  | Бэкенд-разработчик | 56h | 117,600 | 117,600 |  |
| 69 | 5.3 | Интеграция с системой биометрической аутентификации | manual | 5d | 2025-05-19 14:00 | 2025-05-26 13:00 | 53, 67 | 2025-05-19 14:00 | 2025-05-26 13:00 | 5d |  |  | Мобильный разработчик; Специалист по ИБ [50%] | 60h | 198,000 | 142,000 | Риск: 25% / 60000 руб. |
| 70 | 5.4 | Интеграция с push-сервисом банка | manual | 4d | 2025-05-19 14:00 | 2025-05-23 13:00 | 59, 67 | 2025-05-19 14:00 | 2025-05-23 13:00 | 4d |  |  | DevOps-инженер | 32h | 73,600 | 73,600 |  |
| 71 | 5.5 | Интеграция с CRM и системой чатов | manual | 6d | 2025-05-19 14:00 | 2025-05-27 13:00 | 56, 67 | 2025-05-19 14:00 | 2025-05-27 13:00 | 6d |  |  | Бэкенд-разработчик | 48h | 100,800 | 100,800 |  |
| 72 | 5.6 | Настройка мониторинга и логирования (Sentry) | manual | 4d | 2025-05-23 14:00 | 2025-05-29 13:00 | 67 | 2025-05-23 14:00 | 2025-05-29 13:00 | 4d |  |  | DevOps-инженер | 32h | 73,600 | 73,600 |  |
| 73 | 5.7 | Проверка соответствия требованиям 152-ФЗ | manual | 5d | 2025-05-26 14:00 | 2025-06-02 13:00 | 45, 69 | 2025-05-26 14:00 | 2025-06-02 13:00 | 5d |  |  | Специалист по ИБ; Услуги внешнего аудита ИБ | 40h | 358,000 | 358,000 |  |
| 74 | 5.8 | Регрессионное тестирование интеграций | manual | 6d | 2025-06-02 14:00 | 2025-06-10 13:00 | 68, 69, 70, 71, 72, 73 | 2025-06-02 14:00 | 2025-06-10 13:00 | 6d |  |  | Тестировщик [150%] | 72h | 122,400 | 122,400 |  |
| 75 | 5.9 | Тестирование отказоустойчивости каналов связи | manual | 4d | 2025-06-10 14:00 | 2025-06-17 13:00 | 72, 74 | 2025-06-10 14:00 | 2025-06-17 13:00 | 4d |  |  | Тестировщик | 32h | 54,400 | 54,400 |  |
| 76 | 5.10 | Веха 4. Интеграционные работы завершены | milestone, manual | 0d | 2025-06-16 14:00 | 2025-06-16 14:00 | 74, 75 | 2025-06-16 14:00 | 2025-06-16 14:00 | 0d |  |  | Руководитель проекта [50%] |  |  |  |  |
| 77 | 6 | **Этап 5. Тестирование и обеспечение качества** |  | 47.5d | 2025-05-07 14:00 | 2025-07-16 14:00 |  | 2025-05-07 14:00 | 2025-07-16 14:00 | 47.5d | 0d |  |  | 508h | 1,216,000 | 992,000 |  |
| 78 | 6.1 | Разработка тест-плана и тест-кейсов | manual | 5d | 2025-05-07 14:00 | 2025-05-15 13:00 | 65 | 2025-05-07 14:00 | 2025-05-15 13:00 | 5d |  |  | Тестировщик; Бизнес-аналитик [50%] | 60h | 104,000 | 104,000 |  |
| 79 | 6.2 | Функциональное тестирование | manual | 8d | 2025-06-10 14:00 | 2025-06-23 13:00 | 74, 78 | 2025-06-10 14:00 | 2025-06-23 13:00 | 8d |  |  | Тестировщик [200%] | 128h | 217,600 | 217,600 | Риск: 50% / 220000 руб. |
| 80 | 6.3 | Тестирование удобства использования (UX) | manual | 4d | 2025-06-20 14:00 | 2025-06-26 13:00 | 79 | 2025-06-20 14:00 | 2025-06-26 13:00 | 4d |  |  | UX/UI-дизайнер | 32h | 60,800 | 60,800 |  |
| 81 | 6.4 | Тестирование защищённости (pentest) | manual | 5d | 2025-06-20 14:00 | 2025-06-27 13:00 | 73, 79 | 2025-06-20 14:00 | 2025-06-27 13:00 | 5d |  |  | Специалист по ИБ | 40h | 108,000 | 108,000 |  |
| 82 | 6.5 | Тестирование совместимости с устройствами и ОС | manual | 5d | 2025-06-20 14:00 | 2025-06-27 13:00 | 79 | 2025-06-20 14:00 | 2025-06-27 13:00 | 5d |  |  | Тестировщик | 40h | 68,000 | 68,000 |  |
| 83 | 6.6 | Тестирование офлайн-режима при потере связи | manual | 3d | 2025-06-20 14:00 | 2025-06-25 13:00 | 58, 79 | 2025-06-20 14:00 | 2025-06-25 13:00 | 3d |  |  | Тестировщик | 24h | 40,800 | 40,800 |  |
| 84 | 6.7 | Исправление выявленных дефектов | manual | 10d | 2025-06-27 14:00 | 2025-07-11 13:00 | 80, 81, 82, 83 | 2025-06-27 14:00 | 2025-07-11 13:00 | 10d |  | finish no later than 2025-07-16 13:00 | Мобильный разработчик [200%] | 160h | 576,000 | 352,000 |  |
| 85 | 6.8 | Подготовка отчёта о тестировании | manual | 3d | 2025-07-11 14:00 | 2025-07-16 13:00 | 84 | 2025-07-11 14:00 | 2025-07-16 13:00 | 3d |  |  | Тестировщик | 24h | 40,800 | 40,800 |  |
| 86 | 6.9 | Веха 5. Тестирование завершено | milestone, manual | 0d | 2025-07-16 14:00 | 2025-07-16 14:00 | 85 | 2025-07-16 14:00 | 2025-07-16 14:00 | 0d |  |  | Руководитель проекта [50%] |  |  |  |  |
| 87 | 7 | **Этап 6. Подготовка к эксплуатации и выпуск** |  | 23d | 2025-07-16 14:00 | 2025-08-18 13:00 |  | 2025-07-16 14:00 | 2025-08-18 13:00 | 23d | 0d |  |  | 252h | 635,200 | 635,200 |  |
| 88 | 7.1 | Подготовка руководства пользователя | manual | 4d | 2025-07-16 14:00 | 2025-07-22 13:00 | 86 | 2025-07-16 14:00 | 2025-07-22 13:00 | 4d |  |  | Технический писатель [50%] | 16h | 22,400 | 22,400 |  |
| 89 | 7.2 | Обучение сотрудников поддержки | manual | 3d | 2025-07-22 14:00 | 2025-07-25 13:00 | 88 | 2025-07-22 14:00 | 2025-07-25 13:00 | 3d |  |  | Руководитель проекта [50%]; Бизнес-аналитик [50%] | 24h | 51,600 | 51,600 |  |
| 90 | 7.3 | Настройка мониторинга продуктивной среды | manual | 3d | 2025-07-23 14:00 | 2025-07-28 13:00 | 72, 86 | 2025-07-23 14:00 | 2025-07-28 13:00 | 3d |  |  | DevOps-инженер; Услуги облачной инфраструктуры | 24h | 175,200 | 175,200 |  |
| 91 | 7.4 | Публикация в App Store и Google Play | manual | 5d | 2025-07-16 14:00 | 2025-07-23 13:00 | 86 | 2025-07-16 14:00 | 2025-07-23 13:00 | 5d |  |  | DevOps-инженер | 40h | 92,000 | 92,000 |  |
| 92 | 7.5 | Проведение приёмочных испытаний с заказчиком | manual | 4d | 2025-07-25 14:00 | 2025-07-31 13:00 | 86, 89 | 2025-07-25 14:00 | 2025-07-31 13:00 | 4d |  | must finish on 2025-07-31 13:00 | Бизнес-аналитик; Руководитель проекта [50%] | 48h | 97,600 | 97,600 | Риск: 20% / 45000 руб. |
| 93 | 7.6 | Передача документации и исходного кода | manual | 3d | 2025-07-23 14:00 | 2025-07-28 13:00 | 88, 91 | 2025-07-23 14:00 | 2025-07-28 13:00 | 3d |  |  | Технический директор [30%] | 7.2h | 25,200 | 25,200 |  |
| 94 | 7.7 | Запуск рекламной кампании | manual | 6d | 2025-07-31 14:00 | 2025-08-08 13:00 | 92 | 2025-07-31 14:00 | 2025-08-08 13:00 | 6d |  |  | Маркетолог | 48h | 76,800 | 76,800 |  |
| 95 | 7.8 | Анализ первых отзывов и корректировка | manual | 4d | 2025-08-08 14:00 | 2025-08-14 13:00 | 91, 92, 94 | 2025-08-08 14:00 | 2025-08-14 13:00 | 4d |  |  | Маркетолог [50%]; Аналитик данных [50%] | 32h | 57,600 | 57,600 |  |
| 96 | 7.9 | Веха 6. Релиз мобильного приложения выполнен | milestone, manual | 0d | 2025-08-14 14:00 | 2025-08-14 14:00 | 90, 93, 95 | 2025-08-14 14:00 | 2025-08-14 14:00 | 0d |  |  | Руководитель проекта [50%] |  |  |  |  |
| 97 | 7.10 | Закрытие проекта и архивирование | manual | 2d | 2025-08-14 14:00 | 2025-08-18 13:00 | 96 | 2025-08-14 14:00 | 2025-08-18 13:00 | 2d |  |  | Руководитель проекта [50%]; Технический директор [30%] | 12.8h | 36,800 | 36,800 |  |

Notes:
- 69: Риск: задержка поставки SDK биометрической аутентификации. Вероятность 25%, потери 60 000 руб. Меры: использовать резервный SDK.
- 79: Риск: массовые дефекты на этапе функционального тестирования. Вероятность 50%, потери 220 000 руб. Меры: буфер 5 дней в этапе исправления дефектов.
- 92: Риск: неготовность заказчика к приёмочным испытаниям. Вероятность 20%, потери 45 000 руб. Меры: раннее согласование сценариев испытаний.
